# Computing Project

Schedule from MS Project, 2014-02-05 to 2014-09-05, A marks actual dates.
Game

## Calendars

- Standard: Mon-Fri 08:00-12:00, 13:00-17:00; Sat-Sun off.

## Resources

| Resource |
| --- |
| Alastair Campbell |
| Kieran Armstrong |
| Grant Thorburn |

## Schedule

| ID | WBS | Task | Duration | Start | Finish | Predecessors | Complete | Remaining | Total slack | Free slack | Resources | Work | Actual work |
| --- | --- | --- | --- | --- | --- | --- | --- | --- | --- | --- | --- | --- | --- |
| 1 | 1 | **Planning** | 21d | 2014-02-05 A | 2014-03-05 |  | 44% | 11.81d | 75d |  |  | 120h | 52.5h |
| 2 | 1.1 | Plan Genre/Setting | 0.25d | 2014-02-05 A | 2014-02-05 A |  | 100% |  |  |  | Alastair Campbell; Grant Thorburn; Kieran Armstrong | 6h | 6h |
| 3 | 1.2 | Plan Gameplay | 0.25d | 2014-02-05 A | 2014-02-05 A | 2 | 100% |  |  |  | Alastair Campbell; Grant Thorburn; Kieran Armstrong | 6h | 6h |
| 4 | 1.3 | Plan Level Design | 0.5d | 2014-02-05 A | 2014-02-05 | 3 | 50% | 0.25d | 25d | 24d | Alastair Campbell; Grant Thorburn; Kieran Armstrong | 12h | 6h |
| 5 | 1.4 | Plan Story | 0.5d | 2014-02-12 A | 2014-02-12 A | 4 | 100% |  |  |  | Alastair Campbell; Grant Thorburn; Kieran Armstrong | 12h | 12h |
| 6 | 1.5 | Design Characters | 0.25d | 2014-02-12 A | 2014-02-12 A | 5 | 100% |  |  |  | Alastair Campbell; Grant Thorburn; Kieran Armstrong | 6h | 6h |
| 7 | 1.6 | Create Class Diagram | 1d | 2014-02-12 | 2014-02-19 | 6 |  |  | 30d | 0d | Alastair Campbell; Grant Thorburn; Kieran Armstrong | 24h |  |
| 8 | 1.7 | Create Collision Diagram | 0.25d | 2014-02-19 | 2014-02-19 | 7 |  |  | 30d | 14d | Alastair Campbell; Grant Thorburn; Kieran Armstrong | 6h |  |
| 9 | 1.8 | Select Language/Framework | 0.25d | 2014-02-26 A | 2014-02-26 A | 8 | 100% |  |  |  | Alastair Campbell; Grant Thorburn; Kieran Armstrong | 6h | 6h |
| 10 | 1.9 | Plan UI | 0.25d | 2014-02-26 A | 2014-02-26 | 9 | 75% | 0.06d | 80.25d | 0d | Alastair Campbell; Grant Thorburn; Kieran Armstrong | 6h | 4.5h |
| 11 | 1.10 | Plan Sounds | 0.25d | 2014-02-26 | 2014-02-26 | 10 |  |  | 80.25d | 79.25d | Alastair Campbell; Grant Thorburn; Kieran Armstrong | 6h |  |
| 12 | 1.11 | Plan RPG Elements | 0.25d | 2014-02-26 A | 2014-02-26 A | 11 | 100% |  |  |  | Alastair Campbell; Grant Thorburn; Kieran Armstrong | 6h | 6h |
| 13 | 1.12 | Write Pseudocode | 1d | 2014-03-05 | 2014-03-05 | 12 |  |  | 5d | 0d | Alastair Campbell; Grant Thorburn; Kieran Armstrong | 24h |  |
| 14 | 2 | **Implementation** | 122d | 2014-03-06 | 2014-08-22 | 13 |  |  | 8d | 0d |  | 323.52h |  |
| 15 | 2.1 | Design Levels | 3d | 2014-03-12 | 2014-03-26 | 4 |  |  | 5d | 4d | Kieran Armstrong | 24h |  |
| 16 | 2.2 | **Program Game Engine** | 66d | 2014-03-12 | 2014-06-11 | 3, 8, 9, 13, 7 |  |  | 5d | 4d |  | 132h |  |
| 17 | 2.2.1 | Program Movement Logic | 1d | 2014-03-12 | 2014-03-12 |  |  |  | 25d | 24d | Grant Thorburn [50%] | 4h |  |
| 18 | 2.2.2 | Program RPG Elements | 2d | 2014-04-02 | 2014-04-09 | 12, 4, 15 |  |  | 5d | 4d | Kieran Armstrong | 16h |  |
| 19 | 2.2.3 | Program Collision Detection | 2d | 2014-03-12 | 2014-03-19 |  |  |  | 65d |  | Alastair Campbell [50%] | 8h |  |
| 20 | 2.2.4 | Program Graphics Handling | 2d | 2014-03-12 | 2014-03-19 |  |  |  | 65d |  | Alastair Campbell [50%] | 8h |  |
| 21 | 2.2.5 | Program Story Handling | 4d | 2014-04-16 | 2014-05-07 | 5, 17, 18 |  |  | 5d | 4d | Kieran Armstrong; Grant Thorburn [50%] | 32h |  |
| 22 | 2.2.6 | Program Handling Of Sprite Sheets | 1d | 2014-05-14 | 2014-05-14 | 21 |  |  | 5d | 4d | Alastair Campbell [33%]; Kieran Armstrong [33%]; Grant Thorburn [34%] | 8h |  |
| 23 | 2.2.7 | Program Level Handling | 4d | 2014-05-21 | 2014-06-11 | 4, 22 |  |  | 5d |  | Alastair Campbell [50%] | 16h |  |
| 24 | 2.2.8 | Integrate Random Encounters | 2d | 2014-05-21 | 2014-05-28 | 22 |  |  | 15d |  | Alastair Campbell [50%]; Kieran Armstrong [50%] | 16h |  |
| 25 | 2.2.9 | Program Fighting | 2d | 2014-05-21 | 2014-05-28 | 22 |  |  | 15d |  | Kieran Armstrong [50%]; Grant Thorburn [50%] | 16h |  |
| 26 | 2.2.10 | Program Sounds Handling | 2d | 2014-05-21 | 2014-05-28 | 22 |  |  | 15d |  | Grant Thorburn [50%] | 8h |  |

| ID | WBS | Task | Type | Duration | Start | Finish | Predecessors | Total slack | Free slack | Resources | Work |
| --- | --- | --- | --- | --- | --- | --- | --- | --- | --- | --- | --- |
| 27 | 2.3 | **Create Sounds** |  | 36d | 2014-06-18 | 2014-08-06 | 11, 16 | 5d | 4d |  | 120h |
| 28 | 2.3.1 | Create Voice Acting |  | 4d | 2014-06-18 | 2014-07-09 | 36 | 25d |  | Alastair Campbell [25%]; Grant Thorburn [25%]; Kieran Armstrong [25%] | 24h |
| 29 | 2.3.2 | Create Battle Sounds |  | 4d | 2014-06-18 | 2014-07-09 |  | 25d |  | Alastair Campbell [25%]; Grant Thorburn [25%]; Kieran Armstrong [25%] | 24h |
| 30 | 2.3.3 | Create Environment Sounds |  | 4d | 2014-06-18 | 2014-07-09 |  | 25d |  | Alastair Campbell [25%]; Grant Thorburn [25%]; Kieran Armstrong [25%] | 24h |
| 31 | 2.3.4 | Create Background Music |  | 8d | 2014-06-18 | 2014-08-06 |  | 5d |  | Alastair Campbell [25%]; Grant Thorburn [25%]; Kieran Armstrong [25%] | 48h |
| 32 | 2.4 | **Design Sprites** |  | 6d | 2014-08-13 | 2014-08-20 | 11, 16, 27 | 5d | 0d |  | 47.52h |
| 33 | 2.4.1 | Create Environment Sprites |  | 2d | 2014-08-13 | 2014-08-20 | 4 | 5d |  | Alastair Campbell [33%]; Grant Thorburn [33%]; Kieran Armstrong [33%] | 15.84h |
| 34 | 2.4.2 | Create UI |  | 2d | 2014-08-13 | 2014-08-20 | 3 | 5d |  | Alastair Campbell [33%]; Grant Thorburn [33%]; Kieran Armstrong [33%] | 15.84h |
| 35 | 2.4.3 | Create Character Sprites |  | 2d | 2014-08-13 | 2014-08-20 | 6 | 5d |  | Alastair Campbell [33%]; Grant Thorburn [33%]; Kieran Armstrong [33%] | 15.84h |
| 36 | 2.5 | Write Game Script |  | 2d | 2014-03-06 | 2014-03-07 | 5 | 97d | 72d |  |  |
| 37 | 2.6 | Combine Game Elements |  | 2d | 2014-08-21 | 2014-08-22 | 16, 27, 32, 15 | 8d |  |  |  |
| 38 | 3 | **Evaluation** |  | 1d | 2014-08-25 | 2014-08-25 | 14 | 8d |  |  |  |
| 39 | 3.1 | Individual Critical Appraisal |  | 1d | 2014-08-25 | 2014-08-25 |  | 8d |  |  |  |
| 40 | 4 | Project Hand In | milestone, manual | 0d | 2014-09-05 | 2014-09-05 | 38 |  |  |  |  |
